# Kitchen Renovation

Schedule from MS Project, 2020-06-01 to 2020-07-13, costs in $.
Embry Riddle Aeronautical University PMGT 501

## Calendars

- Standard: Mon-Fri 08:00-12:00, 13:00-17:00; Sat-Sun off.

## Resources

| Resource |
| --- |
| Project Manager |
| General Contractor |
| Electical Subcontractor |
| Mechanical Subcontractor |
| Plumbing Subcontractor |
| Paint Subcontractor |
| Demolition Team |
| Design Team |
| Credit Union |
| Homeowners |
| City Inspector |

## Schedule

| ID | WBS | Task | Duration | Start | Finish | Predecessors | Total slack | Free slack | Resources | Work | Cost |
| --- | --- | --- | --- | --- | --- | --- | --- | --- | --- | --- | --- |
| 1 | 1 | **Kitchen Renovation** | 30.75d? | 2020-06-01 08:00 | 2020-07-13 15:00 |  | 0d |  |  | 802h | 29,100 |
| 2 | 1.1 | **Planning and Design** | 7.25d | 2020-06-01 08:00 | 2020-06-10 10:00 |  | 0d |  | Design Team | 160h | 2,450 |
| 3 | 1.1.1 | Research Design Styles | 0.5d | 2020-06-01 08:00 | 2020-06-01 12:00 |  | 0d |  | Design Team | 4h |  |
| 4 | 1.1.2 | Develop Preliminary Design | 0.5d | 2020-06-01 13:00 | 2020-06-01 17:00 | 3 | 0d |  | Design Team | 4h |  |
| 5 | 1.1.3 | Secure funding source | 0.5d | 2020-06-02 08:00 | 2020-06-02 12:00 | 4 | 0d |  | Design Team | 4h |  |
| 6 | 1.1.4 | RFP | 0.5d | 2020-06-02 13:00 | 2020-06-02 17:00 | 5 | 0d |  | Design Team | 4h |  |
| 7 | 1.1.5 | **Select subcontractors** | 1d | 2020-06-03 08:00 | 2020-06-03 17:00 | 6 | 0d |  | General Contractor | 8h |  |
| 8 | 1.1.5.1 | Research and interview subcontractors | 0.5d | 2020-06-03 08:00 | 2020-06-03 12:00 |  | 0d |  |  |  |  |
| 9 | 1.1.5.2 | Acquire subcontractors | 0.5d | 2020-06-03 13:00 | 2020-06-03 17:00 | 8 | 0d |  |  |  |  |
| 10 | 1.1.6 | **Design package** | 2d | 2020-06-04 08:00 | 2020-06-05 17:00 | 7, 6 | 0d |  | Design Team | 32h |  |
| 11 | 1.1.6.1 | Demolition plan (existing reuse vs existing demo) | 2.5h | 2020-06-04 08:00 | 2020-06-04 10:30 |  | 0d |  | Design Team | 2.5h |  |
| 12 | 1.1.6.2 | Architectural and MEP (Mechanical, Electrical, Plumbing) | 2.5h | 2020-06-04 10:30 | 2020-06-04 14:00 | 11 | 0d |  | Design Team | 2.5h |  |
| 13 | 1.1.6.3 | Cabinetry | 2h | 2020-06-04 14:00 | 2020-06-04 16:00 | 12 | 0d |  | Design Team | 2h |  |
| 14 | 1.1.6.4 | Appliances | 2h | 2020-06-04 16:00 | 2020-06-05 09:00 | 13 | 0d |  | Design Team | 2h |  |
| 15 | 1.1.6.5 | Countertops | 2h | 2020-06-05 09:00 | 2020-06-05 11:00 | 14 | 0d |  | Design Team | 2h |  |
| 16 | 1.1.6.6 | Flooring | 2h | 2020-06-05 11:00 | 2020-06-05 14:00 | 15 | 0d |  | Design Team | 2h |  |
| 17 | 1.1.6.7 | Electrical | 1h | 2020-06-05 14:00 | 2020-06-05 15:00 | 16 | 0d |  | Design Team | 1h |  |
| 18 | 1.1.6.8 | Lighting | 1h | 2020-06-05 15:00 | 2020-06-05 16:00 | 17 | 0d |  | Design Team | 1h |  |
| 19 | 1.1.6.9 | Paint | 1h | 2020-06-05 16:00 | 2020-06-05 17:00 | 18 | 0d |  | Design Team | 1h |  |
| 20 | 1.1.7 | **City Permits and Inspections** | 2d | 2020-06-08 08:00 | 2020-06-09 17:00 | 7, 10 | 10d | 0d | General Contractor | 44h |  |
| 21 | 1.1.7.1 | Review and approval of all shop drawings | 0.5d | 2020-06-08 08:00 | 2020-06-08 12:00 |  | 10d | 0d | General Contractor | 4h |  |
| 22 | 1.1.7.2 | Book City Inspection (Roughed In) | 3h | 2020-06-08 13:00 | 2020-06-08 16:00 | 21 | 10d | 0d | General Contractor; City Inspector | 6h |  |
| 23 | 1.1.7.3 | Book City Inspection (Finished Product) | 3h | 2020-06-08 16:00 | 2020-06-09 10:00 | 22 | 10d | 0d | General Contractor; City Inspector | 6h |  |
| 24 | 1.1.7.4 | Perform City Inspection (Roughed In) | 3h | 2020-06-09 10:00 | 2020-06-09 14:00 | 23 | 10d | 0d | General Contractor; City Inspector | 6h |  |
| 25 | 1.1.7.5 | Perform City Inspection (Finished Product) | 3h | 2020-06-09 14:00 | 2020-06-09 17:00 | 24 | 10d | 0d | General Contractor; City Inspector | 6h |  |
| 26 | 1.1.8 | Coordinate subcontractor work | 2h | 2020-06-10 08:00 | 2020-06-10 10:00 | 20 | 23.5d | 0d | General Contractor | 2h |  |

| ID | WBS | Task | Type | Duration | Start | Finish | Predecessors | Total slack | Free slack | Resources | Work | Cost |
| --- | --- | --- | --- | --- | --- | --- | --- | --- | --- | --- | --- | --- |
| 27 | 1.2 | **Demolition** |  | 5d | 2020-06-08 08:00 | 2020-06-12 17:00 | 10 | 0d |  | Demolition Team | 88h | 1,000 |
| 28 | 1.2.1 | Site visit |  | 0.5d | 2020-06-08 08:00 | 2020-06-08 12:00 |  | 0d |  | Demolition Team | 4h |  |
| 29 | 1.2.2 | Create demolition plan |  | 1d | 2020-06-08 13:00 | 2020-06-09 12:00 | 28 | 0d |  | Demolition Team | 8h |  |
| 30 | 1.2.3 | Secure demolition equipment |  | 0.5d | 2020-06-09 13:00 | 2020-06-09 17:00 | 29 | 0d |  | Demolition Team | 4h |  |
| 31 | 1.2.4 | Secure waste container |  | 0.5d | 2020-06-10 08:00 | 2020-06-10 12:00 | 30 | 0d |  | Demolition Team | 4h |  |
| 32 | 1.2.5 | Hire demolition team |  | 0.5d | 2020-06-10 13:00 | 2020-06-10 17:00 | 31 | 0d |  | Demolition Team | 4h |  |
| 33 | 1.2.6 | Structural preperation |  | 1d | 2020-06-11 08:00 | 2020-06-11 17:00 | 32 | 0d |  | Demolition Team | 8h |  |
| 34 | 1.2.7 | **Clean and prepare site for construction** |  | 1d | 2020-06-12 08:00 | 2020-06-12 17:00 | 33 | 0d |  | Demolition Team | 16h |  |
| 35 | 1.2.7.1 | Turn off utilities |  | 0.5d | 2020-06-12 08:00 | 2020-06-12 12:00 |  | 0d |  | Demolition Team | 4h |  |
| 36 | 1.2.7.2 | Pack and secure existing kitchen for reuse |  | 0.5d | 2020-06-12 13:00 | 2020-06-12 17:00 | 35 | 0d |  | Demolition Team | 4h |  |
| 37 | 1.2.8 | Complete demolition | milestone | 0d | 2020-06-12 17:00 | 2020-06-12 17:00 | 36 | 0d |  | Demolition Team |  |  |
| 38 | 1.3 | **Construction** |  | 15d? | 2020-06-15 08:00 | 2020-07-03 17:00 | 27 | 0d |  |  | 512h | 24,200 |
| 39 | 1.3.1 | **Procurement of materials** |  | 7d | 2020-06-15 08:00 | 2020-06-23 17:00 |  | 0d |  | General Contractor | 112h |  |
| 40 | 1.3.1.1 | Estimate quantities |  | 0.5d | 2020-06-15 08:00 | 2020-06-15 12:00 |  | 0d |  | General Contractor | 4h |  |
| 41 | 1.3.1.2 | Quotes for all subcontractors |  | 1d | 2020-06-15 13:00 | 2020-06-16 12:00 | 40 | 0d |  | General Contractor | 8h |  |
| 42 | 1.3.1.3 | Issue contract for electrical |  | 1d | 2020-06-16 13:00 | 2020-06-17 12:00 | 41 | 0d |  | General Contractor | 8h |  |
| 43 | 1.3.1.4 | Issue contract for plumbing |  | 1d | 2020-06-17 13:00 | 2020-06-18 12:00 | 42 | 0d |  | General Contractor | 8h |  |
| 44 | 1.3.1.5 | Issue contract for mechanical |  | 1d | 2020-06-18 13:00 | 2020-06-19 12:00 | 43 | 0d |  | General Contractor | 8h |  |
| 45 | 1.3.1.6 | Issue contract for Painting |  | 0.5d | 2020-06-19 13:00 | 2020-06-19 17:00 | 44 | 0d |  | General Contractor | 4h |  |
| 46 | 1.3.1.7 | Issue contract for cabinets & counters |  | 1d | 2020-06-22 08:00 | 2020-06-22 17:00 | 45 | 0d |  | General Contractor | 8h |  |
| 47 | 1.3.1.8 | Issue contract for Kitchen Appliances |  | 0.5d | 2020-06-23 08:00 | 2020-06-23 12:00 | 46 | 0d |  | General Contractor | 4h |  |
| 48 | 1.3.1.9 | Issue contract for flooring |  | 0.5d | 2020-06-23 13:00 | 2020-06-23 17:00 | 47 | 0d |  | General Contractor | 4h |  |
| 49 | 1.3.2 | **Mechanical** |  | 3d? | 2020-06-24 08:00 | 2020-06-26 17:00 | 20, 39 | 5d | 0d | Mechanical Subcontractor | 48h |  |
| 50 | 1.3.2.1 | Rough in |  | 1d? | 2020-06-24 08:00 | 2020-06-24 17:00 |  | 5d | 0d | Mechanical Subcontractor | 8h |  |
| 51 | 1.3.2.2 | Install |  | 1d? | 2020-06-25 08:00 | 2020-06-25 17:00 | 50 | 5d | 0d | Mechanical Subcontractor | 8h |  |
| 52 | 1.3.2.3 | Test |  | 1d? | 2020-06-26 08:00 | 2020-06-26 17:00 | 51 | 5d | 0d | Mechanical Subcontractor | 8h |  |

| ID | WBS | Task | Duration | Start | Finish | Predecessors | Total slack | Free slack | Resources | Work | Cost |
| --- | --- | --- | --- | --- | --- | --- | --- | --- | --- | --- | --- |
| 53 | 1.3.3 | **Electrical** | 6d | 2020-06-24 08:00 | 2020-07-01 17:00 | 20, 39 | 2d | 0d | Electical Subcontractor | 96h |  |
| 54 | 1.3.3.1 | Rough in | 2d | 2020-06-24 08:00 | 2020-06-25 17:00 |  | 2d | 0d | Electical Subcontractor | 16h |  |
| 55 | 1.3.3.2 | Install | 3d | 2020-06-26 08:00 | 2020-06-30 17:00 | 54 | 2d | 0d | Electical Subcontractor | 24h |  |
| 56 | 1.3.3.3 | Test | 1d | 2020-07-01 08:00 | 2020-07-01 17:00 | 55 | 2d | 0d | Electical Subcontractor | 8h |  |
| 57 | 1.3.4 | **Plumbing** | 8d | 2020-06-24 08:00 | 2020-07-03 17:00 | 20, 39 | 0d |  | Plumbing Subcontractor | 128h |  |
| 58 | 1.3.4.1 | Rough in | 2.5d | 2020-06-24 08:00 | 2020-06-26 12:00 |  | 0d |  | Plumbing Subcontractor | 20h |  |
| 59 | 1.3.4.2 | Install | 3.5d | 2020-06-26 13:00 | 2020-07-01 17:00 | 58 | 0d |  | Plumbing Subcontractor | 28h |  |
| 60 | 1.3.4.3 | Test | 2d | 2020-07-02 08:00 | 2020-07-03 17:00 | 59 | 0d |  | Plumbing Subcontractor | 16h |  |
| 61 | 1.3.5 | **Paint** | 1.5d | 2020-06-24 08:00 | 2020-06-25 12:00 | 20, 39 | 6.5d | 0d | Paint Subcontractor | 24h |  |
| 62 | 1.3.5.1 | Prime | 0.25d | 2020-06-24 08:00 | 2020-06-24 10:00 |  | 6.5d | 0d | Paint Subcontractor | 2h |  |
| 63 | 1.3.5.2 | Paint ceiling | 0.25d | 2020-06-24 10:00 | 2020-06-24 12:00 | 62 | 6.5d | 0d | Paint Subcontractor | 2h |  |
| 64 | 1.3.5.3 | Paint walls | 0.5d | 2020-06-24 13:00 | 2020-06-24 17:00 | 63 | 6.5d | 0d | Paint Subcontractor | 4h |  |
| 65 | 1.3.5.4 | Finish trim | 0.5d | 2020-06-25 08:00 | 2020-06-25 12:00 | 64 | 6.5d | 0d | Paint Subcontractor | 4h |  |
| 66 | 1.3.6 | **Cabinetry & Counters** | 3d | 2020-06-24 08:00 | 2020-06-26 17:00 | 20, 39 | 5d | 0d | Mechanical Subcontractor | 48h |  |
| 67 | 1.3.6.1 | Installation | 3d | 2020-06-24 08:00 | 2020-06-26 17:00 |  | 5d | 0d | Mechanical Subcontractor | 24h |  |
| 68 | 1.3.7 | **Flooring** | 2d | 2020-06-24 08:00 | 2020-06-25 17:00 | 20, 39 | 6d | 0d |  |  |  |
| 69 | 1.3.7.1 | Installation | 2d | 2020-06-24 08:00 | 2020-06-25 17:00 |  | 6d | 0d |  |  |  |
| 70 | 1.3.8 | **Installation of appliances** | 3.5d | 2020-06-24 08:00 | 2020-06-29 12:00 | 20, 39 | 4.5d | 0d | Electical Subcontractor | 56h |  |
| 71 | 1.3.8.1 | Refrigerator | 1.5d | 2020-06-24 08:00 | 2020-06-25 12:00 |  | 4.5d | 0d | Electical Subcontractor | 12h |  |
| 72 | 1.3.8.2 | Dishwashe | 1d | 2020-06-25 13:00 | 2020-06-26 12:00 | 71 | 4.5d | 0d | Electical Subcontractor | 8h |  |
| 73 | 1.3.8.3 | Microwave | 0.5d | 2020-06-26 13:00 | 2020-06-26 17:00 | 72 | 4.5d | 0d | Electical Subcontractor | 4h |  |
| 74 | 1.3.8.4 | Oven | 0.5d | 2020-06-29 08:00 | 2020-06-29 12:00 | 73 | 4.5d | 0d | Electical Subcontractor | 4h |  |
| 75 | 1.4 | **Test and commission** | 3.25d | 2020-07-06 08:00 | 2020-07-09 10:00 | 49, 53, 57, 61, 66, 68, 70 | 0d |  |  | 26h | 850 |
| 76 | 1.4.1 | Refrigerator | 1d | 2020-07-06 08:00 | 2020-07-06 17:00 |  | 0d |  | Electical Subcontractor | 8h |  |
| 77 | 1.4.2 | Dishwasher | 0.75d | 2020-07-07 08:00 | 2020-07-07 15:00 | 76 | 0d |  | Electical Subcontractor | 6h |  |
| 78 | 1.4.3 | Microwave | 0.75d | 2020-07-07 15:00 | 2020-07-08 12:00 | 77 | 0d |  | Electical Subcontractor | 6h |  |
| 79 | 1.4.4 | Oven | 0.75d | 2020-07-08 13:00 | 2020-07-09 10:00 | 78 | 0d |  | Electical Subcontractor | 6h |  |

| ID | WBS | Task | Duration | Start | Finish | Predecessors | Total slack | Resources | Work | Cost |
| --- | --- | --- | --- | --- | --- | --- | --- | --- | --- | --- |
| 80 | 1.5 | **Clean Up** | 1d | 2020-07-09 10:00 | 2020-07-10 10:00 | 75 | 0d |  | 4h | 100 |
| 81 | 1.5.1 | Remove unused material | 0.5d | 2020-07-09 10:00 | 2020-07-09 15:00 |  | 0d | Demolition Team | 4h |  |
| 82 | 1.5.2 | Remove trash | 0.5d | 2020-07-09 15:00 | 2020-07-10 10:00 | 81 | 0d |  |  |  |
| 83 | 1.6 | **Turnover** | 1.5d | 2020-07-10 10:00 | 2020-07-13 15:00 | 80 | 0d | Project Manager | 12h | 500 |
| 84 | 1.6.1 | Sign off on procurement | 0.75d | 2020-07-10 10:00 | 2020-07-10 17:00 |  | 0d |  |  |  |
| 85 | 1.6.2 | Sign off from customers | 0.75d | 2020-07-13 08:00 | 2020-07-13 15:00 | 84 | 0d |  |  |  |
