# Residential Construction

Schedule from MS Project, 2020-08-03 to 2021-03-03, status date 2020-08-28.

## Calendars

- Standard: Mon-Fri 08:00-12:00, 13:00-17:00; Sat-Sun off.

## Resources

| Resource |
| --- |
| General contractor |
| Architect |
| Owner |
| Mortgage lender |
| Site excavation contractor |
| Electric company |
| Electric contractor |
| Plumbing contractor |
| Concrete contractor |
| Inspector |
| Framing contractor |
| Roofing contractor |
| Masonry contractor |
| Heating and AC contractor |
| Insulation contractor |
| Drywall contractor |
| Painting contractor |
| Finish carpentry contractor |
| Flooring contractor |
| Appliance contractor |
| Fencing contractor |
| Landscape contractor |
| Maid service |

## Schedule

| ID | WBS | Task | Type | Duration | Start | Finish | Predecessors | Total slack | Free slack | Resources | Work |
| --- | --- | --- | --- | --- | --- | --- | --- | --- | --- | --- | --- |
| 1 | 1 | **General Conditions** |  | 22d | 2020-08-03 | 2020-09-01 |  | 0d |  |  | 278.4h |
| 2 | 1.1 | Finalize plans, and develop estimate with owner and architect |  | 20d | 2020-08-03 | 2020-08-28 |  | 0d |  | General contractor [50%]; Architect [50%]; Owner [12%]; Mortgage lender [12%] | 198.4h |
| 3 | 1.2 | Sign contract & notice to proceed |  | 1d | 2020-08-31 | 2020-08-31 | 2 | 0d |  | General contractor; Architect; Owner; Mortgage lender | 32h |
| 4 | 1.3 | **Apply for Permits** |  | 1d | 2020-08-31 | 2020-09-01 |  | 0d |  |  | 48h |
| 5 | 1.3.1 | Secure foundation permit |  | 1d | 2020-09-01 | 2020-09-01 | 3 | 0d |  | General contractor | 8h |
| 6 | 1.3.2 | Secure framing permit |  | 1d | 2020-09-01 | 2020-09-01 | 3 | 0d |  | General contractor | 8h |
| 7 | 1.3.3 | Secure electrical permit |  | 1d | 2020-09-01 | 2020-09-01 | 3 | 0d |  | General contractor | 8h |
| 8 | 1.3.4 | Secure plumbing permit |  | 1d | 2020-09-01 | 2020-09-01 | 3 | 0d |  | General contractor | 8h |
| 9 | 1.3.5 | Secure HVAC permit |  | 1d | 2020-09-01 | 2020-09-01 | 3 | 0d |  | General contractor | 8h |
| 10 | 1.3.6 | Secure miscellaneous permits |  | 1d | 2020-09-01 | 2020-09-01 | 3 | 0d |  | General contractor | 8h |
| 11 | 1.3.7 | All Permits Secured | milestone | 0d | 2020-08-31 | 2020-08-31 | 3 | 132d | 0d |  |  |
| 12 | 2 | **Site Work** |  | 3d | 2020-09-02 | 2020-09-04 |  | 0d |  |  | 32h |
| 13 | 2.1 | Clear and grub lot |  | 1d | 2020-09-02 | 2020-09-02 | 5, 6, 7, 8, 10, 9 | 0d |  | Site excavation contractor | 8h |
| 14 | 2.2 | Install temporary power service |  | 1d | 2020-09-03 | 2020-09-03 | 13 | 0d |  | Electric company | 8h |
| 15 | 2.3 | Install underground utilities |  | 1d | 2020-09-04 | 2020-09-04 | 14 | 0d |  | Electric contractor; Plumbing contractor | 16h |
| 16 | 2.4 | All Site Work Complete | milestone | 0d | 2020-09-04 | 2020-09-04 | 15 | 0d |  |  |  |
| 17 | 3 | **Foundation** |  | 42d | 2020-09-07 | 2020-11-03 |  | 0d |  |  | 280h |
| 18 | 3.1 | Excavate for foundations |  | 3d | 2020-09-07 | 2020-09-09 | 16 | 0d |  | Site excavation contractor | 24h |
| 19 | 3.2 | Form basement walls |  | 13d | 2020-09-10 | 2020-09-28 | 18 | 0d |  | Concrete contractor | 104h |
| 20 | 3.3 | Place concrete for foundations & basement walls |  | 12d | 2020-09-29 | 2020-10-14 | 19 | 0d |  | Concrete contractor | 96h |
| 21 | 3.4 | Cure basement walls for 7 days |  | 7d | 2020-10-15 | 2020-10-23 | 20 | 0d |  |  |  |
| 22 | 3.5 | Strip basement wall forms |  | 2d | 2020-10-26 | 2020-10-27 | 21 | 0d |  | Concrete contractor | 16h |
| 23 | 3.6 | Waterproof/insulate basement walls |  | 2d | 2020-10-28 | 2020-10-29 | 22 | 0d |  | Concrete contractor | 16h |
| 24 | 3.7 | Perform foundation inspection |  | 1d | 2020-10-30 | 2020-10-30 | 23, 18 | 0d |  | Inspector | 8h |
| 25 | 3.8 | Backfill foundation |  | 2d | 2020-11-02 | 2020-11-03 | 24 | 0d |  | Site excavation contractor | 16h |
| 26 | 3.9 | Foundation Complete | milestone | 0d | 2020-11-03 | 2020-11-03 | 25 | 0d |  |  |  |

| ID | WBS | Task | Type | Duration | Start | Finish | Predecessors | Total slack | Free slack | Resources | Work |
| --- | --- | --- | --- | --- | --- | --- | --- | --- | --- | --- | --- |
| 27 | 4 | **Framing** |  | 22d | 2020-11-04 | 2020-12-03 |  | 0d |  |  | 176h |
| 28 | 4.1 | Install 1st floor joists |  | 2d | 2020-11-04 | 2020-11-05 | 26 | 0d |  | Framing contractor | 16h |
| 29 | 4.2 | Lay 1st floor decking |  | 2d | 2020-11-06 | 2020-11-09 | 28 | 0d |  | Framing contractor | 16h |
| 30 | 4.3 | Frame 1st floor walls |  | 4d | 2020-11-10 | 2020-11-13 | 29 | 0d |  | Framing contractor | 32h |
| 31 | 4.4 | Frame 1st floor corners |  | 1d | 2020-11-16 | 2020-11-16 | 30 | 0d |  | Framing contractor | 8h |
| 32 | 4.5 | Install 2nd floor joists |  | 2d | 2020-11-17 | 2020-11-18 | 31 | 0d |  | Framing contractor | 16h |
| 33 | 4.6 | Frame 2nd floor decking |  | 2d | 2020-11-19 | 2020-11-20 | 32 | 0d |  | Framing contractor | 16h |
| 34 | 4.7 | Frame 2nd floor walls |  | 3d | 2020-11-23 | 2020-11-25 | 33 | 0d |  | Framing contractor | 24h |
| 35 | 4.8 | Frame 2nd floor corners |  | 2d | 2020-11-26 | 2020-11-27 | 34 | 0d |  | Framing contractor | 16h |
| 36 | 4.9 | Complete roof framing |  | 3d | 2020-11-30 | 2020-12-02 | 35 | 0d |  | Framing contractor | 24h |
| 37 | 4.10 | Conduct framing inspection |  | 1d | 2020-12-03 | 2020-12-03 | 36 | 0d |  | Inspector | 8h |
| 38 | 4.11 | Framing Complete | milestone | 0d | 2020-12-03 | 2020-12-03 | 37 | 0d |  |  |  |
| 39 | 5 | **Dry In** |  | 22d | 2020-12-03 | 2021-01-01 |  | 1d | 0d |  | 152h |
| 40 | 5.1 | Install 1st floor sheathing |  | 3d | 2020-12-04 | 2020-12-08 | 38 | 0d |  | Framing contractor | 24h |
| 41 | 5.2 | Install 2nd floor sheathing |  | 3d | 2020-12-09 | 2020-12-11 | 40 | 0d |  | Framing contractor | 24h |
| 42 | 5.3 | Install roof decking |  | 3d | 2020-12-03 | 2020-12-07 | 36 | 4d | 0d | Framing contractor | 24h |
| 43 | 5.4 | Install felt, flashing and shingles |  | 3d | 2020-12-21 | 2020-12-23 | 53 | 0d |  | Roofing contractor | 24h |
| 44 | 5.5 | Hang 1st floor exterior doors |  | 1d | 2020-12-24 | 2020-12-24 | 43 | 0d |  | Framing contractor | 8h |
| 45 | 5.6 | Install 1st floor windows |  | 3d | 2020-12-25 | 2020-12-29 | 44 | 0d |  | Framing contractor | 24h |
| 46 | 5.7 | Install 2nd floor windows |  | 3d | 2020-12-30 | 2021-01-01 | 45 | 0d |  | Framing contractor | 24h |
| 47 | 5.8 | Dry In Complete | milestone | 0d | 2021-01-01 | 2021-01-01 | 46 | 5d | 0d |  |  |
| 48 | 6 | **Exterior Finishes** |  | 19d | 2021-01-04 | 2021-01-28 |  | 5d | 0d |  | 152h |
| 49 | 6.1 | Complete exterior brick |  | 16d | 2021-01-04 | 2021-01-25 | 47 | 5d | 0d | Masonry contractor | 128h |
| 50 | 6.2 | Complete exterior siding |  | 3d | 2021-01-26 | 2021-01-28 | 49 | 5d | 0d | Framing contractor | 24h |
| 51 | 6.3 | <Exterior Finishes Complete | milestone | 0d | 2021-01-28 | 2021-01-28 | 50 | 24d | 0d |  |  |

| ID | WBS | Task | Type | Duration | Start | Finish | Predecessors | Total slack | Free slack | Resources | Work |
| --- | --- | --- | --- | --- | --- | --- | --- | --- | --- | --- | --- |
| 52 | 7 | **Utility Rough-B97Ins and Complete Concrete** |  | 21d | 2020-12-08 | 2021-01-05 |  | 4d | 0d |  | 232h |
| 53 | 7.1 | Rough-in plumbing |  | 5d | 2020-12-14 | 2020-12-18 | 42, 41 | 0d |  | Plumbing contractor | 40h |
| 54 | 7.2 | Conduct rough-in plumbing inspection |  | 1d | 2020-12-21 | 2020-12-21 | 53 | 20d | 0d | Inspector | 8h |
| 55 | 7.3 | Place concrete for basement floor |  | 11d | 2020-12-22 | 2021-01-05 | 54 | 33d | 0d | Concrete contractor | 88h |
| 56 | 7.4 | Rough-in electrical |  | 5d | 2020-12-14 | 2020-12-18 | 42, 41 | 6d | 0d | Electric contractor | 40h |
| 57 | 7.5 | Conduct rough-in electrical inspection |  | 1d | 2020-12-21 | 2020-12-21 | 56 | 6d | 0d | Inspector | 8h |
| 58 | 7.6 | Rough-in HVAC |  | 3d | 2020-12-22 | 2020-12-24 | 57 | 6d | 0d | Heating and AC contractor | 24h |
| 59 | 7.7 | Conduct rough-in HVAC inspection |  | 1d | 2020-12-25 | 2020-12-25 | 58 | 24d | 0d | Inspector | 8h |
| 60 | 7.8 | Rough-in communication - phone, cable, computer, alarm |  | 2d | 2020-12-08 | 2020-12-09 | 42 | 17d | 0d | Electric contractor | 16h |
| 61 | 7.9 | Utility Rough-ins Complete | milestone | 0d | 2020-12-09 | 2020-12-09 | 60 | 60d | 0d |  |  |
| 62 | 8 | **Interior Finishes** |  | 30d | 2021-01-04 | 2021-02-12 |  | 0d |  |  | 408h |
| 63 | 8.1 | **Insulation** |  | 11d | 2021-01-04 | 2021-01-18 |  | 0d |  |  | 32h |
| 64 | 8.1.1 | Place wall insulation - 1st floor |  | 1d | 2021-01-04 | 2021-01-04 | 40, 46, 60, 58, 56, 41 | 0d |  | Insulation contractor | 8h |
| 65 | 8.1.2 | Place wall insulation - 2nd floor |  | 1d | 2021-01-05 | 2021-01-05 | 64 | 27d | 0d | Insulation contractor | 8h |
| 66 | 8.1.3 | Place ceiling insulation - 2nd floor |  | 1d | 2021-01-15 | 2021-01-15 | 72, 65 | 24d | 0d | Insulation contractor | 8h |
| 67 | 8.1.4 | Conduct insulation inspection |  | 1d | 2021-01-18 | 2021-01-18 | 66 | 24d | 0d | Inspector | 8h |
| 68 | 8.2 | **Drywall** |  | 9d | 2021-01-05 | 2021-01-15 |  | 0d |  |  | 80h |
| 69 | 8.2.1 | Install drywall - 1st floor walls |  | 2d | 2021-01-05 | 2021-01-06 | 64 | 0d |  | Drywall contractor | 16h |
| 70 | 8.2.2 | Install drywall - 1st floor overhead |  | 2d | 2021-01-07 | 2021-01-08 | 69 | 0d |  | Drywall contractor | 16h |
| 71 | 8.2.3 | Install drywall 2nd floor walls |  | 2d | 2021-01-11 | 2021-01-12 | 70, 65 | 24d | 0d | Drywall contractor | 16h |
| 72 | 8.2.4 | Install drywall 2nd floor overhead |  | 2d | 2021-01-13 | 2021-01-14 | 71 | 24d | 0d | Drywall contractor | 16h |
| 73 | 8.2.5 | Tape and float 1st floor drywall |  | 1d | 2021-01-11 | 2021-01-11 | 70 | 0d |  | Drywall contractor | 8h |
| 74 | 8.2.6 | Tape and float 2nd floor drywall |  | 1d | 2021-01-15 | 2021-01-15 | 72, 73 | 33d | 0d | Drywall contractor | 8h |
| 75 | 8.3 | **Paint and Wallpaper** |  | 17d | 2021-01-12 | 2021-02-03 |  | 0d |  |  | 72h |
| 76 | 8.3.1 | Texture all except entry and kitchen - 1st floor |  | 1d | 2021-01-12 | 2021-01-12 | 73 | 0d |  | Painting contractor | 8h |
| 77 | 8.3.2 | Paint all except entry and kitchen - 1st floor |  | 1d | 2021-01-13 | 2021-01-13 | 76 | 0d |  | Painting contractor | 8h |
| 78 | 8.3.3 | Hang wallpaper entry and kitchen - 1st floor |  | 1d | 2021-01-14 | 2021-01-14 | 77 | 0d |  | Painting contractor | 8h |
| 79 | 8.3.4 | Texture all - 2nd floor |  | 1d | 2021-01-13 | 2021-01-13 | 76 | 34d | 0d | Painting contractor | 8h |
| 80 | 8.3.5 | Paint all - 2nd floor |  | 1d | 2021-01-14 | 2021-01-14 | 79 | 34d | 0d | Painting contractor | 8h |
| 81 | 8.3.6 | Paint exterior siding & trim work |  | 4d | 2021-01-29 | 2021-02-03 | 50 | 5d | 0d | Painting contractor | 32h |

| ID | WBS | Task | Type | Duration | Start | Finish | Predecessors | Total slack | Free slack | Resources | Work |
| --- | --- | --- | --- | --- | --- | --- | --- | --- | --- | --- | --- |
| 82 | 8.4 | **Cabinets** |  | 6d | 2021-01-15 | 2021-01-22 |  | 0d |  |  | 48h |
| 83 | 8.4.1 | Install 1st floor - kitchen cabinets |  | 2d | 2021-01-15 | 2021-01-18 | 78 | 0d |  | Finish carpentry contractor | 16h |
| 84 | 8.4.2 | Install 1st floor - master bath and guest cabinets |  | 1d | 2021-01-19 | 2021-01-19 | 83 | 0d |  | Finish carpentry contractor | 8h |
| 85 | 8.4.3 | Install 2nd floor - hall bath and private bath cabinets |  | 1d | 2021-01-20 | 2021-01-20 | 84 | 1d | 0d | Finish carpentry contractor | 8h |
| 86 | 8.4.4 | Install chair rails, crown moldings, trim |  | 2d | 2021-01-21 | 2021-01-22 | 85 | 20d | 0d | Finish carpentry contractor | 16h |
| 87 | 8.5 | **Finish Plumbing** |  | 6d | 2021-01-19 | 2021-01-26 |  | 0d |  |  | 48h |
| 88 | 8.5.1 | Complete 1st floor - kitchen plumbing |  | 1d | 2021-01-19 | 2021-01-19 | 83, 54 | 0d |  | Plumbing contractor | 8h |
| 89 | 8.5.2 | Complete 1st floor - master bath and guest plumbing |  | 2d | 2021-01-20 | 2021-01-21 | 88, 84 | 0d |  | Plumbing contractor | 16h |
| 90 | 8.5.3 | Complete 2nd floor - hall bath and private bath plumbing |  | 2d | 2021-01-22 | 2021-01-25 | 89, 85 | 0d |  | Plumbing contractor | 16h |
| 91 | 8.5.4 | Conduct finish plumbing inspection |  | 1d | 2021-01-26 | 2021-01-26 | 90 | 0d |  | Inspector | 8h |
| 92 | 8.6 | **Finish Electrical** |  | 3d | 2021-01-26 | 2021-01-28 |  | 1d | 0d |  | 40h |
| 93 | 8.6.1 | Complete 1st floor circuits to service panel |  | 1d | 2021-01-26 | 2021-01-26 | 90, 57 | 3d | 0d | Electric contractor | 8h |
| 94 | 8.6.2 | Complete 2nd floor circuits to service panel |  | 1d | 2021-01-27 | 2021-01-27 | 93 | 3d | 0d | Electric contractor | 8h |
| 95 | 8.6.3 | Conduct finish electrical inspection |  | 1d | 2021-01-28 | 2021-01-28 | 94 | 3d | 0d | Inspector | 8h |
| 96 | 8.6.4 | Complete communications wiring - phone, cable, computer, alarm |  | 2d | 2021-01-27 | 2021-01-28 | 91 | 0d |  | Electric contractor | 16h |
| 97 | 8.7 | **Finish HVAC** |  | 3d | 2021-01-29 | 2021-02-02 |  | 0d |  |  | 24h |
| 98 | 8.7.1 | Complete 1st floor - zone 1 HVAC |  | 1d | 2021-01-29 | 2021-01-29 | 96, 59 | 0d |  | Heating and AC contractor | 8h |
| 99 | 8.7.2 | Complete 2nd floor - zone 2 HVAC |  | 1d | 2021-02-01 | 2021-02-01 | 98 | 0d |  | Heating and AC contractor | 8h |
| 100 | 8.7.3 | Conduct HVAC inspection |  | 1d | 2021-02-02 | 2021-02-02 | 99 | 0d |  | Inspector | 8h |
| 101 | 8.8 | **Carpet, Tile and Appliances** |  | 8d | 2021-02-03 | 2021-02-12 |  | 0d |  |  | 64h |
| 102 | 8.8.1 | Tile entry, kitchen and baths |  | 3d | 2021-02-03 | 2021-02-05 | 95, 100 | 0d |  | Flooring contractor | 24h |
| 103 | 8.8.2 | Carpet 1st floor |  | 2d | 2021-02-08 | 2021-02-09 | 102 | 0d |  | Flooring contractor | 16h |
| 104 | 8.8.3 | Carpet 2nd floor |  | 2d | 2021-02-10 | 2021-02-11 | 103 | 0d |  | Flooring contractor | 16h |
| 105 | 8.8.4 | Install appliances |  | 1d | 2021-02-12 | 2021-02-12 | 104 | 0d |  | Appliance contractor | 8h |
| 106 | 8.8.5 | Interior Finishes Complete | milestone | 0d | 2021-02-12 | 2021-02-12 | 105 | 13d | 0d |  |  |

| ID | WBS | Task | Type | Duration | Start | Finish | Predecessors | Total slack | Free slack | Resources | Work |
| --- | --- | --- | --- | --- | --- | --- | --- | --- | --- | --- | --- |
| 107 | 9 | **Landscaping and Grounds Work** |  | 12d | 2021-02-04 | 2021-02-19 |  | 0d |  |  | 56h |
| 108 | 9.1 | Pour concrete driveway and sidewalks |  | 2d | 2021-02-04 | 2021-02-05 | 81 | 5d | 0d | Concrete contractor | 16h |
| 109 | 9.2 | Install backyard fence |  | 2d | 2021-02-15 | 2021-02-16 | 105, 108 | 0d |  | Fencing contractor | 16h |
| 110 | 9.3 | Sod and complete plantings - front yard |  | 2d | 2021-02-17 | 2021-02-18 | 109 | 0d |  | Landscape contractor | 16h |
| 111 | 9.4 | Sod and complete plantings - backyard |  | 1d | 2021-02-19 | 2021-02-19 | 110 | 0d |  | Landscape contractor | 8h |
| 112 | 9.5 | Landscaping & Grounds Work Complete | milestone | 0d | 2021-02-19 | 2021-02-19 | 111 | 0d |  |  |  |
| 113 | 10 | **Final Acceptance** |  | 8d | 2021-02-22 | 2021-03-03 |  | 0d |  |  | 64h |
| 114 | 10.1 | Complete final inspection for certificate of occupancy |  | 1d | 2021-02-22 | 2021-02-22 | 100, 95, 91, 67, 86, 55, 112 | 0d |  | Inspector | 8h |
| 115 | 10.2 | Cleanup for occupancy |  | 1d | 2021-02-23 | 2021-02-23 | 105, 114 | 0d |  | Maid service | 8h |
| 116 | 10.3 | Perform final walk-through inspection |  | 1d | 2021-02-24 | 2021-02-24 | 115 | 0d |  | Owner | 8h |
| 117 | 10.4 | Complete punch list items |  | 5d | 2021-02-25 | 2021-03-03 | 116 | 0d |  | General contractor | 40h |
| 118 | 10.5 | Residential Construction Project Complete | milestone | 0d | 2021-03-03 | 2021-03-03 | 117 | 0d |  |  |  |
